Schedule from OmniPlan, 2011-06-13 to 2011-07-28.
Project start 2011-06-13

## Resources

| Resource | Group |
| --- | --- |
| Architect | staff |
| Developer A | staff |
| Developer B | staff |
| Team | group |

## Schedule

| ID | WBS | Task | Start | Predecessors | Complete | Resources | Work | Actual work |
| --- | --- | --- | --- | --- | --- | --- | --- | --- |
| 1 | 1 | **Code Style Documentation and Training** |  |  |  |  |  |  |
| 2 | 1.1 | Choose coding style |  |  | 100% | Architect | 1h | 1h |
| 3 | 1.2 | Document coding style | 2011-06-14 | 2 |  | Architect | 0.5h |  |
| 4 | 1.3 | Train team in Javadoc | 2011-06-13 |  |  | Architect; Developer A; Developer B | 4h |  |
| 5 | 1.4 | Train team in Junit | 2011-06-15 |  |  | Architect; Developer A; Developer B | 4h |  |
| 6 | 2 | **Maven** |  | 1 |  |  |  |  |
| 7 | 2.1 | Train domain expert | 2011-06-16 |  |  | Developer B | 5h |  |
| 8 | 2.2 | Verify skeleton follows good practices | 2011-06-20 | 7 |  | Developer B | 1h |  |
| 9 | 3 | **Jenkins Integration** |  | 8 |  |  |  |  |
| 10 | 3.1 | Contact Eday and arrange Jenkins building of skeleton | 2011-06-21 |  |  | Developer A | 1h |  |
| 11 | 4 | **User Documentation** |  | 1 |  |  |  |  |
| 12 | 4.1 | Train Sphinx domain expert | 2011-06-21 |  |  | Developer B | 6h |  |
| 13 | 4.2 | Contact Sponsor and determine how user documentation will be delievered | 2011-06-16 |  |  | Developer A | 1h |  |
| 14 | 4.3 | Write narrative user documentation | 2011-07-28 | 28FF, 13FF, 12 |  | Developer B; Architect; Developer A | 8h |  |
| 15 | 5 | **Research and Design** |  |  |  |  |  |  |
| 16 | 5.1 | **Async Model** |  |  |  |  |  |  |
| 17 | 5.1.1 | Research Async in Java | 2011-06-15 |  | 60% | Developer A; Architect | 10h | 6h |
| 18 | 5.1.2 | Decide on Callback vs Futures | 2011-06-22 | 17 |  | Architect | 1h |  |
| 19 | 5.2 | **Server Communication** |  |  |  |  |  |  |
| 20 | 5.2.1 | **HTTP** |  |  |  |  |  |  |
| 21 | 5.2.1.1 | Research HTTP Libraries | 2011-06-15 |  | 62% | Architect | 8h | 5h |
| 22 | 5.2.1.2 | Select HTTP Library | 2011-06-21 | 21, 17 |  | Architect | 0.02h |  |
| 23 | 5.2.2 | **JSON** |  |  |  |  |  |  |
| 24 | 5.2.2.1 | Research JSON Libraries | 2011-06-25 |  |  | Developer B | 2h |  |
| 25 | 5.2.2.2 | Select JSON Library | 2011-06-26 | 24 |  | Architect | 0.08h |  |
| 26 | 5.3 | Design interface of blocking API | 2011-07-04 |  |  | Developer A | 8h |  |
| 27 | 5.4 | Adapt blocking interface for Async use | 2011-07-12 | 18, 26, 41 |  | Architect | 4h |  |

| ID | WBS | Task | Start | Predecessors | Complete | Resources | Work | Actual work |
| --- | --- | --- | --- | --- | --- | --- | --- | --- |
| 28 | 6 | **Implementation and Code Documentation** |  | 1, 8 |  |  |  |  |
| 29 | 6.1 | **Blocking API** |  |  |  |  |  |  |
| 30 | 6.1.1 | **Memory Backend** |  |  |  |  |  |  |
| 31 | 6.1.1.1 | Implement Memory Backend | 2011-06-21 |  | 75% | Developer A | 8h | 6h |
| 32 | 6.1.1.2 | Document Memory Backend | 2011-06-27 | 31FF, 4 |  | Developer A | 2h |  |
| 33 | 6.1.1.3 | Create Unit Tests for Memory Backend | 2011-06-28 | 31FF |  | Developer A | 2h |  |
| 34 | 6.1.2 | Implement Blocking Frontend | 2011-06-28 | 30FF |  | Developer B | 3h |  |
| 35 | 6.1.3 | Document Blocking Frontend | 2011-06-30 | 34FF |  | Developer B | 4h |  |
| 36 | 6.1.4 | Create Blocking Fronend Unit Test Suite | 2011-07-03 | 5, 34 |  | Architect; Developer B | 8h |  |
| 37 | 6.1.5 | **Blocking HTTP Backend** |  |  |  |  |  |  |
| 38 | 6.1.5.1 | Implement Blocking HTTP Backend | 2011-06-27 | 25, 22 |  | Architect | 8h |  |
| 39 | 6.1.5.2 | Document Blocking HTTP Backend | 2011-07-06 | 38FF |  | Architect | 2h |  |
| 40 | 6.1.5.3 | Create Unit Tests for Async HTTP Backend | 2011-07-02 | 38FF |  | Developer A | 2h |  |
| 41 | 6.1.6 | Extend Blocking Frontend to support HTTP | 2011-07-07 | 37 |  | Developer B | 3h |  |
| 42 | 6.1.7 | Jenkins-Run Integration Tests for Blocking API | 2011-07-09 | 10, 36, 41 |  | Architect; Developer A | 8h |  |
| 43 | 6.2 | **Async API** |  | 27 |  |  |  |  |
| 44 | 6.2.1 | **Async HTTP Backend** |  |  |  |  |  |  |
| 45 | 6.2.1.1 | Implement Async HTTP Backend | 2011-07-15 |  |  | Developer A | 10h |  |
| 46 | 6.2.1.2 | Document Async HTTP Backend | 2011-07-21 | 45FF |  | Architect | 1h |  |
| 47 | 6.2.1.3 | Create Unit Tests for Async HTTP Backend | 2011-07-22 | 45FF |  | Architect | 4h |  |
| 48 | 6.2.2 | Implement Async Frontend | 2011-07-25 | 44 |  | Developer B | 2h |  |
| 49 | 6.2.3 | Document Async Frontend | 2011-07-26 | 48FF |  | Developer B | 2h |  |
| 50 | 6.2.4 | Adapt Test Suite to Async Frontend | 2011-07-22 | 41, 48FF |  | Developer A | 8h |  |
